# Gantt_ Proyecto Automatización Core Entel _20260626

Schedule from MS Project, 2026-04-13 to 2026-11-30.

## Calendars

- Estándar: Mon-Fri 09:00-13:00, 15:00-19:00; Sat-Sun off. Exceptions (off unless hours are given): 2026-06-29 (San Pedro y San Pablo), 2026-07-16 (Día de la Virgen del Carmen), 2026-09-18 (Independencia Nacional), 2026-10-12 (Encuentro de Dos Mundos).

## Schedule

| ID | WBS | Task | Type | Duration | Start | Finish | Predecessors | Total slack | Free slack | Constraint |
| --- | --- | --- | --- | --- | --- | --- | --- | --- | --- | --- |
| 1 | 1 | **0. Gestión y Gobierno del Proyecto** |  | 101d | 2026-07-08 | 2026-11-30 |  | 0d |  |  |
| 2 | 1.1 | Gestión, seguimiento y control del proyecto |  | 98d | 2026-07-13 | 2026-11-30 |  | 0d |  | start no earlier than 2026-07-13 |
| 3 | 1.2 | Gobernanza, riesgos, dependencias y comités |  | 101d | 2026-07-08 | 2026-11-30 |  | 0d |  | finish no earlier than 2026-11-30 |
| 4 | 1.3 | ◆ Hito: Gobernanza Operativa | milestone | 0d | 2026-11-30 | 2026-11-30 | 2, 3 | 0d |  |  |
| 5 | 2 | **Desarrollo IR21** |  | 162d | 2026-04-13 | 2026-11-30 |  | 0d |  |  |
| 6 | 2.1 | **1. Inicio y Planificación** |  | 65d | 2026-04-13 | 2026-07-13 |  | 97d |  |  |
| 7 | 2.1.1 | Kickoff, alcance y levantamiento de requerimientos |  | 52d | 2026-04-13 | 2026-06-23 |  | 109d | 12d | finish no earlier than 2026-06-23 |
| 8 | 2.1.2 | Planificación, backlog, roadmap y cronograma |  | 21d | 2026-06-11 | 2026-07-10 |  | 97d | 0d | finish no earlier than 2026-07-10 |
| 9 | 2.1.3 | ◆ Hito: Plan del Proyecto Aprobado |  | 1d | 2026-07-13 | 2026-07-13 | 7, 8 | 97d |  |  |
| 10 | 2.2 | **2. Arquitectura y Diseño** |  | 60d | 2026-04-20 | 2026-07-13 |  | 97d |  |  |
| 11 | 2.2.1 | Diseño HLD y arquitectura de la solución |  | 30d | 2026-04-20 | 2026-05-29 |  | 97d | 0d | finish no earlier than 2026-05-29 |
| 12 | 2.2.2 | Validaciones técnicas y arquitectura objetivo |  | 30d | 2026-06-01 | 2026-07-13 | 11 | 97d | 0d | start no earlier than 2026-06-01 |
| 13 | 2.2.3 | ◆ Hito: Arquitectura y solución validada | milestone | 0d | 2026-07-13 | 2026-07-13 | 11, 12 | 97d |  |  |
| 14 | 2.3 | **3. Infraestructura y Accesos** |  | 70d | 2026-04-27 | 2026-08-04 |  | 0d |  |  |
| 15 | 2.3.1 | Entrega VM |  | 40d | 2026-04-27 | 2026-06-19 |  | 0d |  | start no earlier than 2026-04-27 |
| 16 | 2.3.2 | Implementación de infraestructura, red y almacenamiento |  | 30d | 2026-06-22 | 2026-08-04 | 15 | 0d |  |  |
| 17 | 2.3.3 | ◆ Hito: Infraestructura disponible | milestone | 0d | 2026-08-04 | 2026-08-04 | 15, 16 | 0d |  |  |
| 18 | 2.4 | **4. Integración IR21 – OSVI / PSG / Firewall** |  | 35d | 2026-08-05 | 2026-09-23 |  | 0d |  |  |
| 19 | 2.4.1 | Desarrollo de integración IR21–OSVI |  | 10d | 2026-08-05 | 2026-08-18 | 14 | 0d |  |  |
| 20 | 2.4.2 | Desarrollo de integración IR21–PSG |  | 10d | 2026-08-19 | 2026-09-01 | 19 | 0d |  |  |
| 21 | 2.4.3 | Desarrollo de integración IR21–Firewall |  | 15d | 2026-09-02 | 2026-09-23 | 20 | 10d | 0d |  |
| 22 | 2.4.4 | ◆ Hito: Integración Implementada IR21 | milestone | 0d | 2026-09-23 | 2026-09-23 | 19, 20, 21 | 10d |  |  |
| 23 | 2.5 | **5. Observabilidad y Monitoreo** |  | 71d | 2026-06-26 | 2026-10-07 |  | 0d |  |  |
| 24 | 2.5.1 | Configuración de Splunk y monitoreo |  | 10d | 2026-09-02 | 2026-09-15 | 20 | 0d |  |  |
| 25 | 2.5.2 | Dashboards, alertas e indicadores |  | 15d | 2026-09-16 | 2026-10-07 | 24 | 0d |  |  |
| 26 | 2.5.3 | ◆ Hito: Observabilidad Operativa | milestone | 0d | 2026-06-26 | 2026-06-26 |  | 71d |  |  |

| ID | WBS | Task | Type | Duration | Start | Finish | Predecessors | Total slack | Free slack |
| --- | --- | --- | --- | --- | --- | --- | --- | --- | --- |
| 27 | 2.6 | **6. Pruebas y Validaciones** |  | 25d | 2026-10-08 | 2026-11-12 |  | 0d |  |
| 28 | 2.6.1 | Pruebas funcionales, técnicas e integración |  | 10d | 2026-10-08 | 2026-10-22 | 18, 23 | 0d |  |
| 29 | 2.6.2 | Corrección de incidencias y UAT |  | 15d | 2026-10-23 | 2026-11-12 | 28 | 0d |  |
| 30 | 2.6.3 | ◆ Hito: UAT Aprobada | milestone | 0d | 2026-11-12 | 2026-11-12 | 28, 29 | 0d |  |
| 31 | 2.7 | **7. Documentación y Transferencia** |  | 15d | 2026-10-08 | 2026-10-29 |  | 22d |  |
| 32 | 2.7.1 | Documentación técnica, operativa y manuales |  | 10d | 2026-10-08 | 2026-10-22 | 23 | 22d | 0d |
| 33 | 2.7.2 | Capacitación y transferencia al equipo operativo |  | 5d | 2026-10-23 | 2026-10-29 | 32 | 22d |  |
| 34 | 2.7.3 | ◆ Hito: Documentación Aprobada | milestone | 0d | 2026-10-22 | 2026-10-22 | 32 | 27d |  |
| 35 | 2.8 | **8. Implementación Productiva** |  | 9d | 2026-11-13 | 2026-11-25 |  | 0d |  |
| 36 | 2.8.1 | Despliegue y Go Live |  | 2d | 2026-11-13 | 2026-11-16 | 27 | 0d |  |
| 37 | 2.8.2 | Estabilización y soporte post implementación |  | 2d | 2026-11-17 | 2026-11-18 | 36 | 0d |  |
| 38 | 2.8.3 | Marcha Blanca |  | 5d | 2026-11-19 | 2026-11-25 | 36, 37 | 0d |  |
| 39 | 2.8.4 | ◆ Hito: Go Live Exitoso | milestone | 0d | 2026-11-25 | 2026-11-25 | 36, 37, 38 | 0d |  |
| 40 | 2.9 | **9. Cierre del Proyecto** |  | 3d | 2026-11-26 | 2026-11-30 |  | 0d |  |
| 41 | 2.9.1 | Cierre administrativo y técnico |  | 2d | 2026-11-26 | 2026-11-27 | 39 | 0d |  |
| 42 | 2.9.2 | Aceptación formal |  | 1d | 2026-11-30 | 2026-11-30 | 41 | 0d |  |
| 43 | 2.9.3 | ◆ Hito: Proyecto Cerrado | milestone | 0d | 2026-11-30 | 2026-11-30 | 41, 42 | 0d |  |
